# CRO - JEDI

Schedule from MS Project, 2011-08-22 to 2011-11-04, A marks actual dates.

## Calendars

- Padrão: Mon-Fri 09:00-12:00, 13:00-18:00; Sat-Sun off.

## Resources

| Resource |
| --- |
| Ivan |
| Eduardo |
| Orlando |
| Davi |
| JEDI |
| Eduardo, Ivan |
| Orlando, Davi |
| Orlando,Davi |
| Ivan, Orlando |
| Davi, Eduardo |

## Schedule

| ID | WBS | Task | Duration | Start | Finish | Predecessors | Complete | Remaining | Total slack | Free slack | Constraint | Resources | Work | Actual work |
| --- | --- | --- | --- | --- | --- | --- | --- | --- | --- | --- | --- | --- | --- | --- |
| 1 | 1 | **Fitness Mobile - JEDI** | 54.5d | 2011-08-22 09:00 A | 2011-11-04 14:00 |  | 7% | 50.82d | 0d |  |  |  | 1175h | 78.16h |
| 2 | 1.1 | **RF_11: Escolha do modo de visualização** | 15.12d | 2011-08-22 09:00 A | 2011-09-12 10:00 |  | 35% | 9.86d | 32.88d |  |  | JEDI | 132.5h | 8h |
| 3 | 1.1.1 | Realizar análise do requisito | 1h | 2011-08-22 09:00 A | 2011-08-22 10:00 A |  | 100% |  |  |  |  | Ivan | 1h | 1h |
| 4 | 1.1.2 | Criar Diagrama de Classes, Caso de Uso e Diagrama Objeto Relacional | 30min | 2011-08-22 10:00 A | 2011-08-22 10:30 A | 3 | 100% |  |  |  |  | Ivan | 0.5h | 0.5h |
| 5 | 1.1.3 | Definir a interface de interação com o usuário | 1h | 2011-08-22 10:30 A | 2011-08-22 11:30 A | 4 | 100% |  |  |  |  | Eduardo | 1h | 1h |
| 6 | 1.1.4 | Codificar | 4h | 2011-09-09 09:00 A | 2011-09-09 14:00 | 5 | 38% | 2.5h | 32.88d | 0d |  | Eduardo | 4h | 1.5h |
| 7 | 1.1.5 | Revisar | 4h | 2011-09-09 14:00 | 2011-09-09 18:00 | 6 |  |  | 32.88d | 0d |  | Orlando | 4h |  |
| 8 | 1.1.6 | Testar | 1h | 2011-09-12 09:00 | 2011-09-12 10:00 | 7 |  |  | 15.88d |  |  | Davi | 1h |  |
| 9 | 1.2 | **RF_01: Manter dados do Usuário** | 15d | 2011-08-29 09:00 A | 2011-09-16 18:00 |  | 99% | 0d | 0d |  |  | JEDI | 128h | 12h |
| 10 | 1.2.1 | Realizar análise do requisito | 1h | 2011-08-29 09:00 A | 2011-08-29 10:00 A |  | 100% |  |  |  | start no earlier than 2011-08-29 09:00 | Orlando | 1h | 1h |
| 11 | 1.2.2 | Criar Diagrama de Classes, Caso de Uso e Diagrama Objeto Relacional | 1h | 2011-08-29 10:00 A | 2011-08-29 11:00 A | 10 | 100% |  |  |  |  | Orlando | 1h | 1h |
| 12 | 1.2.3 | Criação da camada de acesso à base de dados | 2h | 2011-08-29 11:00 A | 2011-08-29 14:00 A | 11 | 100% |  |  |  |  | Ivan | 2h | 2h |
| 13 | 1.2.4 | Codificação do CRUD | 2h | 2011-09-09 09:00 A | 2011-09-09 11:00 A | 12 | 100% |  |  |  | start no earlier than 2011-09-09 09:00 | Eduardo | 2h | 2h |
| 14 | 1.2.5 | Revisar | 1h | 2011-09-09 11:00 A | 2011-09-09 12:00 A | 13 | 100% |  |  |  |  | Davi | 1h | 1h |
| 15 | 1.2.6 | Testar | 1h | 2011-09-09 13:00 A | 2011-09-09 14:00 A | 14 | 100% |  |  |  |  | Davi | 1h | 1h |
| 16 | 1.2.7 | Preparar apresentação da sprint | 1d | 2011-09-16 09:00 A | 2011-09-16 18:00 A | 15 | 100% |  |  |  | start no earlier than 2011-09-16 09:00 |  |  |  |
| 17 | 1.2.8 | Apresentar os resultados do RF 01 e RF 11 | 1d | 2011-09-16 09:00 A | 2011-09-16 18:00 A | 16FF | 100% |  |  |  |  |  |  |  |
| 18 | 1.3 | **RF_06: Mostrar o desenvolvimento do usuário por periodo** | 38d | 2011-09-05 09:00 A | 2011-10-26 18:00 |  | 4% | 36.59d | 6.5d |  |  | JEDI | 857h | 54.16h |
| 19 | 1.3.1 | Analisar o requisito | 8h | 2011-09-05 09:00 A | 2011-09-05 18:00 A |  | 100% |  |  |  | finish no earlier than 2011-09-05 18:00 | Eduardo, Ivan | 8h | 8h |
| 20 | 1.3.2 | Criar Diagrama de Classes e Caso de Uso | 6h | 2011-09-06 09:00 A | 2011-09-06 16:00 A | 19 | 100% |  |  |  | start no earlier than 2011-09-05 09:00 | Orlando, Davi | 6h | 6h |
| 21 | 1.3.3 | Escolha e tratamento da imagem anatômica | 3h | 2011-09-06 16:00 A | 2011-09-07 10:00 A | 20 | 100% |  |  |  |  |  |  |  |
| 22 | 1.3.4 | Recorte da imagem, fazendo a divisão por músculos individuais | 3h | 2011-09-07 10:00 A | 2011-09-07 14:00 A | 21 | 100% |  |  |  |  |  |  |  |
| 23 | 1.3.5 | Mudanças no diagrama de classe | 276h | 2011-09-07 14:00 A | 2011-10-25 18:00 | 22 | 1% | 273.75h | 1d |  | finish no earlier than 2011-10-25 18:00 |  |  |  |
| 24 | 1.3.6 | Criação do DAO | 3h | 2011-09-07 17:00 A | 2011-09-08 11:00 A | 23 | 100% |  |  |  |  |  |  |  |
| 25 | 1.3.7 | Mudança no código-fonte, adequando os tratamentos aos retornos do DAO | 3h | 2011-09-08 11:00 A | 2011-09-08 15:00 A | 24 | 100% |  |  |  |  |  |  |  |
| 26 | 1.3.8 | Codificar | 275h | 2011-09-08 15:00 A | 2011-10-26 18:00 | 25 | 1% | 272h | 6.5d |  | finish no earlier than 2011-10-26 18:00 | Orlando,Davi | 275h | 3h |
| 27 | 1.3.9 | Testar | 264h | 2011-09-12 09:00 | 2011-10-26 18:00 |  |  |  | 6.5d |  | finish no earlier than 2011-10-26 18:00 | Eduardo, Ivan | 264h |  |

Notes:
- 2: Esta atividade depende do Requisito RFN_03 da equipe DroidMaster.
- 9: Esta atividade depende do Requisito RFN_03 da equipe DroidMaster e RF_11 da nossa equipe.

| ID | WBS | Task | Duration | Start | Finish | Predecessors | Complete | Remaining | Total slack | Free slack | Constraint | Resources | Work | Actual work |
| --- | --- | --- | --- | --- | --- | --- | --- | --- | --- | --- | --- | --- | --- | --- |
| 28 | 1.4 | **RF_10: Controle das atividades durante o exercício** | 45.25d | 2011-08-22 09:00 A | 2011-10-24 11:00 |  | 27% | 33.18d | 9.25d |  |  |  | 12h | 4h |
| 29 | 1.4.1 | Realizar análise do requisito | 1h | 2011-10-21 09:00 A | 2011-10-21 10:00 A |  | 100% |  |  |  | start no earlier than 2011-10-21 09:00 | Eduardo; Davi | 2h | 2h |
| 30 | 1.4.2 | Criar Diagrama de Classes, Caso de Uso e Diagrama Objeto Relacional | 30min | 2011-10-21 10:00 A | 2011-10-21 10:30 A | 29 | 100% |  |  |  | start no earlier than 2011-09-19 09:00 | Eduardo; Davi | 1h | 1h |
| 31 | 1.4.3 | Definir a interface de interação com o usuário | 30min | 2011-10-21 10:30 A | 2011-10-21 11:00 A | 30 | 100% |  |  |  | start no earlier than 2011-09-19 09:00 | Eduardo; Davi | 1h | 1h |
| 32 | 1.4.4 | Codificar | 8h | 2011-10-21 11:00 | 2011-10-24 11:00 | 31 |  |  | 9.25d |  |  | Ivan, Orlando | 8h |  |
| 33 | 1.4.5 | Testar | 3h | 2011-08-22 09:00 | 2011-08-22 12:00 |  |  |  | 47.62d |  |  |  |  |  |
| 34 | 1.4.6 | Criar slide sobre o desenvolvimento do requisito | 1h | 2011-08-22 09:00 A | 2011-08-22 10:00 A |  | 100% |  |  |  |  |  |  |  |
| 35 | 1.4.7 | Apresentar os requisitos | 1h | 2011-08-22 09:00 A | 2011-08-22 10:00 A |  | 100% |  |  |  |  |  |  |  |
| 36 | 1.5 | **RF_12: Exportar Informações** | 24.5d | 2011-10-03 09:00 | 2011-11-04 14:00 |  |  |  | 0d |  |  |  | 45.5h |  |
| 37 | 1.5.1 | Realizar análise do requisito | 1.5h | 2011-10-03 09:00 | 2011-10-03 10:30 |  |  |  | 17d | 0d | start no earlier than 2011-10-03 09:00 | Davi, Eduardo | 1.5h |  |
| 38 | 1.5.2 | Criar Diagrama de Classes, Caso de Uso e Diagrama de Sequencia | 2d | 2011-10-28 09:00 | 2011-10-31 18:00 | 37 |  |  | 0d |  | start no earlier than 2011-10-28 09:00 | Davi, Eduardo | 16h |  |
| 39 | 1.5.3 | Codificar | 2d | 2011-11-01 09:00 | 2011-11-02 18:00 | 38 |  |  | 0d |  | start no earlier than 2011-10-03 09:00 | Ivan, Orlando | 16h |  |
| 40 | 1.5.4 | Revisar | 1d | 2011-11-03 09:00 | 2011-11-03 18:00 | 39 |  |  | 0d |  | start no earlier than 2011-10-03 09:00 | Ivan, Orlando | 8h |  |
| 41 | 1.5.5 | Testar | 2h | 2011-11-04 09:00 | 2011-11-04 11:00 | 40 |  |  | 0d |  | start no earlier than 2011-10-03 09:00 | Ivan, Orlando | 2h |  |
| 42 | 1.5.6 | Criar slide sobre o desenvolvimento do requisito | 1h | 2011-11-04 11:00 | 2011-11-04 12:00 | 41 |  |  | 0d |  |  | Davi, Eduardo | 1h |  |
| 43 | 1.5.7 | Apresentar os requisitos | 1h | 2011-11-04 13:00 | 2011-11-04 14:00 | 42 |  |  | 0d |  |  | Ivan, Orlando | 1h |  |
