# Fitness Mobile

Schedule from MS Project, 2011-08-19 to 2011-10-13, A marks actual dates.

## Calendars

- Padrão: Mon-Fri 09:00-12:00, 13:00-18:00; Sat-Sun off. Exceptions (off unless hours are given): 2011-08-20 09:00-12:00, 13:00-18:00.

## Resources

| Resource |
| --- |
| Bruno |
| Daniel |
| DROIDMASTER |
| Thiago Abreu |
| Gustavo |
| Wlysses |
| Rafael |

## Schedule

| ID | WBS | Task | Duration | Start | Finish | Predecessors | Complete | Remaining | Total slack | Free slack | Constraint | Resources | Work | Actual work |
| --- | --- | --- | --- | --- | --- | --- | --- | --- | --- | --- | --- | --- | --- | --- |
| 1 | 1 | **Fitness Mobile - DroidMaster** | 41d | 2011-08-19 09:00 A | 2011-10-13 18:00 |  | 76% | 9.95d | 0d |  |  | DROIDMASTER | 621.75h | 279.94h |
| 2 | 1.1 | **RNF_03: Definição da UI para Aplicação** | 3.25d | 2011-08-19 09:00 A | 2011-08-23 11:00 A |  | 100% |  |  |  |  | DROIDMASTER | 60h | 60h |
| 3 | 1.1.1 | Realizar análise completa do requisito e materializar em documento | 16h | 2011-08-19 09:00 A | 2011-08-20 18:00 A |  | 100% |  |  |  | start no earlier than 2011-08-19 09:00 | Daniel | 16h | 16h |
| 4 | 1.1.2 | Construir um prototipo | 8h | 2011-08-20 09:00 A | 2011-08-20 18:00 A |  | 100% |  |  |  | start no earlier than 2011-08-20 09:00 | Thiago Abreu; Gustavo | 16h | 16h |
| 5 | 1.1.3 | Apresentar o protótipo para a turma | 2h | 2011-08-23 09:00 A | 2011-08-23 11:00 A | 4 | 100% |  |  |  | start no earlier than 2011-08-23 09:00 | Bruno | 2h | 2h |
| 6 | 1.2 | **RF_07: Registro de rastreamento do usuário via GPS** | 4.66d | 2011-08-19 09:00 A | 2011-08-24 15:15 A |  | 100% |  |  |  |  | DROIDMASTER | 96.25h | 96.25h |
| 7 | 1.2.1 | Realizar análise completa do requisito e materializar em documento | 16h | 2011-08-19 09:00 A | 2011-08-20 18:00 A |  | 100% |  |  |  | finish no earlier than 2011-08-20 18:00 | Bruno; Rafael | 32h | 32h |
| 8 | 1.2.2 | Criar Diagrama de Classes, Caso de Uso e Diagrama Objeto Relacional | 3h | 2011-08-22 09:00 A | 2011-08-22 12:00 A | 7 | 100% |  |  |  |  | Bruno; Rafael | 4h | 4h |
| 9 | 1.2.3 | Levantar estrutura da base de dados | 4h | 2011-08-22 13:00 A | 2011-08-22 17:00 A | 8 | 100% |  |  |  |  | Gustavo | 4h | 4h |
| 10 | 1.2.4 | Codificar | 5.25h | 2011-08-23 09:00 A | 2011-08-23 15:15 A | 9 | 100% |  |  |  | finish no earlier than 2011-08-23 14:00 | Thiago Abreu; Gustavo | 7h | 7h |
| 11 | 1.2.5 | Revisar | 4h | 2011-08-23 10:15 A | 2011-08-23 15:15 A | 10FF | 100% |  |  |  |  | Rafael | 4h | 4h |
| 12 | 1.2.6 | Testar | 1d | 2011-08-23 15:15 A | 2011-08-24 15:15 A | 11 | 100% |  |  |  |  | Wlysses | 8h | 8h |
| 13 | 1.3 | Desenvolver apresentação sobre evolução dos requisitos | 1d | 2011-08-24 17:00 A | 2011-08-25 17:00 A | 12 | 100% |  |  |  |  | Wlysses | 8h | 8h |
| 14 | 1.4 | Apresentar os requisitos 03 e 07 | 2h | 2011-08-26 09:00 A | 2011-08-26 11:00 A |  | 100% |  |  |  | start no earlier than 2011-08-26 09:00 |  |  |  |
| 15 | 1.5 | **RF_08: Fornecer Mapa do percurso percorrido** | 5d | 2011-10-07 09:00 A | 2011-10-13 18:00 |  | 46% | 2.71d | 0d |  |  | DROIDMASTER | 116h | 72.33h |
| 16 | 1.5.1 | Realizar análise do requisito | 4h | 2011-10-07 09:00 A | 2011-10-07 14:00 A |  | 100% |  |  |  | start no earlier than 2011-10-07 09:00 | Bruno; Daniel; Rafael | 12h | 12h |
| 17 | 1.5.2 | Definir a interface de interação com o usuário, como o mapa será mostrado | 1d | 2011-10-07 14:00 A | 2011-10-10 14:00 | 16 | 75% | 0.25d | 1.5d | 0d |  | Bruno; Daniel; Rafael | 24h | 18h |
| 18 | 1.5.3 | Codificar | 2d | 2011-10-10 14:00 A | 2011-10-12 14:00 | 17 | 75% | 0.5d | 0d |  |  | Thiago Abreu; Gustavo | 32h | 24h |
| 19 | 1.5.4 | Revisar | 4h | 2011-10-12 09:00 | 2011-10-12 14:00 | 18FF |  |  | 0d |  |  | Wlysses | 4h |  |
| 20 | 1.5.5 | Testar | 4h | 2011-10-12 09:00 | 2011-10-12 14:00 | 19FF |  |  | 0d |  |  | Wlysses | 4h |  |
| 21 | 1.5.6 | Desenvolver apresentação sobre evolução dos requisitos | 6h | 2011-10-12 14:00 | 2011-10-13 11:00 | 20 |  |  | 0d |  | start no earlier than 2011-09-08 09:00 |  |  |  |
| 22 | 1.5.7 | Apresentar os requisitos 07 e 08 | 6h | 2011-10-13 11:00 | 2011-10-13 18:00 | 21 |  |  | 0d |  | start no earlier than 2011-09-09 09:00 |  |  |  |
| 23 | 1.6 | **RF_09: Disponibilizar para o usuário o desempenho no percurso rastreado** | 0.69d | 2011-10-12 14:00 | 2011-10-13 10:30 | 20 |  |  | 0.81d |  |  | DROIDMASTER | 13.5h |  |
| 24 | 1.6.1 | Analisar o requisito | 0.5h | 2011-10-12 14:00 | 2011-10-12 14:30 |  |  |  | 0.81d | 0d |  | Bruno; Daniel | 1h |  |
| 25 | 1.6.2 | Criar Diagrama de Classes, Caso de Uso e Diagrama Objeto Relacional | 0.5h | 2011-10-12 14:30 | 2011-10-12 15:00 | 24 |  |  | 0.81d | 0d |  | Bruno; Daniel | 1h |  |
| 26 | 1.6.3 | Codificar | 1.5h | 2011-10-12 15:00 | 2011-10-12 16:30 | 25 |  |  | 0.81d | 0d |  | Thiago Abreu; Gustavo | 3h |  |
| 27 | 1.6.4 | Revisar | 30min | 2011-10-12 16:30 | 2011-10-12 17:00 | 26 |  |  | 0.81d | 0d |  | Wlysses | 0.5h |  |
| 28 | 1.6.5 | Testar o requisito | 2.5h | 2011-10-12 17:00 | 2011-10-13 10:30 | 27 |  |  | 0.81d |  |  | Wlysses | 2.5h |  |

Notes:
- 4: Lembrando que como não se tem os diagramas definidos pelos os outros grupos, o prototipo servirar mais para definir color e navegação
- 5: Fazer uma reunião no inicio do projeto para definição dos padrões,cores,etc relacionado a aplicação,registrar a pauta da reunião em documento que será disponibilizado para todas as equipes / Definir a interface de interação com o usuário, como o mapa será mostrado
