# Fitness Mobile

Schedule from MS Project, 2011-08-19 to 2011-11-28, A marks actual dates.

## Calendars

- Padrão: Mon-Fri 09:00-12:00, 13:00-18:00; Sat-Sun off. Exceptions (off unless hours are given): 2011-08-20 09:00-12:00, 13:00-18:00, 2011-11-27 09:00-12:00, 13:00-18:00.

## Resources

| Resource |
| --- |
| Bruno |
| Daniel |
| DROIDMASTER |
| Thiago Abreu |
| Gustavo |
| Wlysses |
| Rafael |

## Schedule

| ID | WBS | Task | Duration | Start | Finish | Predecessors | Complete | Remaining | Total slack | Free slack | Constraint | Resources | Work | Actual work |
| --- | --- | --- | --- | --- | --- | --- | --- | --- | --- | --- | --- | --- | --- | --- |
| 1 | 1 | **Fitness Mobile - DroidMaster** | 74d? | 2011-08-19 09:00 A | 2011-11-28 18:00 |  | 85% | 11.24d? | 0d |  |  | DROIDMASTER | 1201.25h | 580.37h |
| 2 | 1.1 | **RNF_03: Definição da UI para Aplicação** | 3.25d | 2011-08-19 09:00 A | 2011-08-23 11:00 A |  | 100% |  |  |  |  | DROIDMASTER | 60h | 60h |
| 3 | 1.1.1 | Realizar análise completa do requisito e materializar em documento | 16h | 2011-08-19 09:00 A | 2011-08-20 18:00 A |  | 100% |  |  |  | start no earlier than 2011-08-19 09:00 | Daniel | 16h | 16h |
| 4 | 1.1.2 | Construir um prototipo | 8h | 2011-08-20 09:00 A | 2011-08-20 18:00 A |  | 100% |  |  |  | start no earlier than 2011-08-20 09:00 | Thiago Abreu; Gustavo | 16h | 16h |
| 5 | 1.1.3 | Apresentar o protótipo para a turma | 2h | 2011-08-23 09:00 A | 2011-08-23 11:00 A | 4 | 100% |  |  |  | start no earlier than 2011-08-23 09:00 | Bruno | 2h | 2h |
| 6 | 1.2 | **RF_07: Registro de rastreamento do usuário via GPS** | 4.66d | 2011-08-19 09:00 A | 2011-08-24 15:15 |  | 61% | 1.8d | 69.34d |  |  | DROIDMASTER | 96.25h | 66.21h |
| 7 | 1.2.1 | Realizar análise completa do requisito e materializar em documento | 16h | 2011-08-19 09:00 A | 2011-08-20 18:00 A |  | 100% |  |  |  | finish no earlier than 2011-08-20 18:00 | Bruno; Rafael | 32h | 32h |
| 8 | 1.2.2 | Criar Diagrama de Classes, Caso de Uso e Diagrama Objeto Relacional | 3h | 2011-08-22 09:00 A | 2011-08-22 12:00 A | 7 | 100% |  |  |  |  | Bruno; Rafael | 4h | 4h |
| 9 | 1.2.3 | Levantar estrutura da base de dados | 4h | 2011-08-22 13:00 | 2011-08-22 17:00 | 8 |  |  | 71.12d |  |  | Gustavo | 4h |  |
| 10 | 1.2.4 | Codificar | 5.25h | 2011-08-23 09:00 A | 2011-08-23 15:15 A | 9 | 100% |  |  |  | finish no earlier than 2011-08-23 14:00 | Thiago Abreu; Gustavo | 7h | 7h |
| 11 | 1.2.5 | Revisar | 4h | 2011-08-23 10:15 A | 2011-08-23 15:15 | 10FF | 10% | 3.6h | 69.34d | 0d |  | Rafael | 4h | 0.4h |
| 12 | 1.2.6 | Testar | 1d | 2011-08-23 15:15 | 2011-08-24 15:15 | 11 |  |  | 69.34d |  |  | Wlysses | 8h |  |
| 13 | 1.3 | Desenvolver apresentação sobre evolução dos requisitos | 1d | 2011-08-24 17:00 A | 2011-08-25 17:00 A | 12 | 100% |  |  |  |  | Wlysses | 8h | 8h |
| 14 | 1.4 | Apresentar os requisitos 03 e 07 | 2h | 2011-08-26 09:00 A | 2011-08-26 11:00 A |  | 100% |  |  |  | start no earlier than 2011-08-26 09:00 |  |  |  |
| 15 | 1.5 | **RF_08: Fornecer Mapa do percurso percorrido** | 5.75d | 2011-09-02 09:00 A | 2011-09-09 16:00 A |  | 100% |  |  |  |  | DROIDMASTER | 210h | 210h |
| 16 | 1.5.1 | Realizar análise do requisito | 4h | 2011-09-02 09:00 A | 2011-09-02 14:00 A |  | 100% |  |  |  | start no earlier than 2011-09-02 09:00 | Bruno; Daniel; Rafael | 12h | 12h |
| 17 | 1.5.2 | Definir a interface de interação com o usuário, como o mapa será mostrado | 2d | 2011-09-02 14:00 A | 2011-09-06 14:00 A | 16 | 100% |  |  |  |  | Bruno; Daniel; Rafael | 48h | 48h |
| 18 | 1.5.3 | Criar Diagrama de Classes, Caso de Uso e Diagrama Objeto Relacional | 2d | 2011-09-02 09:00 A | 2011-09-05 18:00 A |  | 100% |  |  |  | start no earlier than 2011-09-02 09:00 | Bruno; Daniel; Rafael | 48h | 48h |
| 19 | 1.5.4 | Codificar | 3d | 2011-09-06 09:00 A | 2011-09-08 18:00 A | 18 | 100% |  |  |  |  | Thiago Abreu; Gustavo | 48h | 48h |
| 20 | 1.5.5 | Revisar | 4h | 2011-09-08 14:00 A | 2011-09-08 18:00 A | 19FF | 100% |  |  |  |  | Wlysses | 4h | 4h |
| 21 | 1.5.6 | Testar | 4h | 2011-09-08 14:00 A | 2011-09-08 18:00 A | 20FF | 100% |  |  |  |  | Wlysses | 4h | 4h |
| 22 | 1.5.7 | Desenvolver apresentação sobre evolução dos requisitos | 6h | 2011-09-08 09:00 A | 2011-09-08 16:00 A |  | 100% |  |  |  | start no earlier than 2011-09-08 09:00 |  |  |  |
| 23 | 1.5.8 | Apresentar os requisitos 07 e 08 | 6h | 2011-09-09 09:00 A | 2011-09-09 16:00 A |  | 100% |  |  |  | start no earlier than 2011-09-09 09:00 |  |  |  |
| 24 | 1.6 | **RF_09: Disponibilizar para o usuário o desempenho no percurso rastreado** | 4.5d | 2011-10-17 09:00 A | 2011-10-21 14:00 A | 21 | 100% |  |  |  |  | DROIDMASTER | 123h | 123h |
| 25 | 1.6.1 | Realizar análise do requisito | 1d | 2011-10-17 09:00 A | 2011-10-17 18:00 A |  | 100% |  |  |  | start no earlier than 2011-10-17 09:00 | Bruno; Daniel | 16h | 16h |
| 26 | 1.6.2 | Definir a interface de interação com o usuário, como o mapa será mostrado | 1d | 2011-10-18 09:00 A | 2011-10-18 18:00 A | 25 | 100% |  |  |  |  | Bruno; Daniel | 16h | 16h |
| 27 | 1.6.3 | Criar Diagrama de Classes, Caso de Uso e Diagrama Objeto Relacional | 4h | 2011-10-18 09:00 A | 2011-10-18 14:00 A |  | 100% |  |  |  | start no earlier than 2011-10-18 09:00 | Bruno; Daniel | 8h | 8h |
| 28 | 1.6.4 | Codificar | 2d | 2011-10-18 09:00 A | 2011-10-19 18:00 A |  | 100% |  |  |  | start no earlier than 2011-10-18 09:00 | Thiago Abreu; Gustavo | 32h | 32h |
| 29 | 1.6.5 | Revisar | 1d | 2011-10-20 09:00 A | 2011-10-20 18:00 A | 28 | 100% |  |  |  |  | Rafael | 8h | 8h |
| 30 | 1.6.6 | Testar | 4h | 2011-10-21 09:00 A | 2011-10-21 14:00 A | 29 | 100% |  |  |  |  | Wlysses | 4h | 4h |
| 31 | 1.6.7 | Desenvolver apresentação sobre evolução dos requisitos | 2h | 2011-10-21 09:00 A | 2011-10-21 11:00 A |  | 100% |  |  |  | start no earlier than 2011-10-21 09:00 | Daniel | 2h | 2h |
| 32 | 1.6.8 | Apresentar os requisitos 07, 08 e 09 | 1h | 2011-10-21 09:00 A | 2011-10-21 10:00 A |  | 100% |  |  |  | start no earlier than 2011-10-21 09:00 | DROIDMASTER | 1h | 1h |

Notes:
- 4: Lembrando que como não se tem os diagramas definidos pelos os outros grupos, o prototipo servirar mais para definir color e navegação
- 5: Fazer uma reunião no inicio do projeto para definição dos padrões,cores,etc relacionado a aplicação,registrar a pauta da reunião em documento que será disponibilizado para todas as equipes / Definir a interface de interação com o usuário, como o mapa será mostrado

| ID | WBS | Task | Duration | Start | Finish | Predecessors | Complete | Remaining | Total slack | Constraint | Resources | Work | Actual work |
| --- | --- | --- | --- | --- | --- | --- | --- | --- | --- | --- | --- | --- | --- |
| 33 | 1.7 | **BUG_ 01 - Adicionar Perca de Calorias** | 6d? | 2011-11-18 09:00 A | 2011-11-25 18:00 |  | 95% | 0.3d? | 2d |  |  | 72h | 69.8h |
| 34 | 1.7.1 | Codificar | 3d? | 2011-11-18 09:00 A | 2011-11-22 18:00 A |  | 100% |  |  | finish no earlier than 2011-11-22 18:00 | Thiago Abreu; Gustavo | 48h | 48h |
| 35 | 1.7.2 | Revisar | 0.5d? | 2011-11-22 09:00 A | 2011-11-22 14:00 A |  | 100% |  |  | start no earlier than 2011-11-22 09:00 | Bruno; Daniel | 8h | 8h |
| 36 | 1.7.3 | Testar | 1d? | 2011-11-24 09:00 A | 2011-11-24 18:00 A |  | 100% |  |  | start no earlier than 2011-11-24 09:00 | Wlysses | 8h | 8h |
| 37 | 1.7.4 | Desenvolver apresentação sobre evolução dos requisitos | 1d? | 2011-11-25 09:00 A | 2011-11-25 18:00 | 36 | 73% | 0.27d? | 2d |  | Bruno | 8h | 5.8h |
| 38 | 1.8 | **BUG_02 - Salvar dados de exercicio aerobicos realizados no banco de dados.** | 3d? | 2011-11-25 09:00 | 2011-11-28 18:00 |  |  |  | 0d |  |  | 40h |  |
| 39 | 1.8.1 | Codificar | 1d? | 2011-11-25 09:00 | 2011-11-26 18:00 |  |  |  | 0d | finish no earlier than 2011-11-26 18:00 | Thiago Abreu; Gustavo | 16h |  |
| 40 | 1.8.2 | Revisar | 1d? | 2011-11-27 09:00 | 2011-11-27 18:00 | 39 |  |  | 0d | start no earlier than 2011-11-27 09:00 | Bruno; Daniel | 16h |  |
| 41 | 1.8.3 | Testar | 1d? | 2011-11-28 09:00 | 2011-11-28 18:00 | 40 |  |  | 0d |  | Wlysses | 8h |  |
