# CRO - JEDI

Schedule from MS Project, 2011-08-26 to 2011-10-03.

## Calendars

- Padrão: Mon-Fri 09:00-12:00, 13:00-18:00; Sat-Sun off.

## Resources

| Resource |
| --- |
| Ivan |
| Eduardo |
| Orlando |
| Davi |
| JEDI |
| Eduardo, Ivan |
| Orlando, Davi |
| Orlando,Davi |
| Ivan, Orlando |
| Davi, Eduardo |

## Schedule

| ID | WBS | Task | Duration | Start | Finish | Predecessors | Total slack | Free slack | Constraint | Resources | Work |
| --- | --- | --- | --- | --- | --- | --- | --- | --- | --- | --- | --- |
| 1 | 1 | **Fitness Mobile - JEDI** | 27d | 2011-08-26 09:00 | 2011-10-03 18:00 |  | 0d |  |  |  | 114h |
| 2 | 1.1 | **RF_11: Escolha do modo de visualização** | 1.75d | 2011-08-26 09:00 | 2011-08-29 16:00 |  | 21.38d |  |  | JEDI | 28h |
| 3 | 1.1.1 | Realizar análise do requisito e materializar em documento formal | 4h | 2011-08-26 09:00 | 2011-08-26 14:00 |  | 21.38d | 0d | start no earlier than 2011-08-26 09:00 | Ivan | 4h |
| 4 | 1.1.2 | Criar Diagrama de Classes, Caso de Uso e Diagrama Objeto Relacional | 2h | 2011-08-26 14:00 | 2011-08-26 16:00 | 3 | 21.38d | 0d |  | Ivan | 2h |
| 5 | 1.1.3 | Definir a interface de interação com o usuário | 1h | 2011-08-26 16:00 | 2011-08-26 17:00 | 4 | 21.38d | 0d |  | Eduardo | 1h |
| 6 | 1.1.4 | Codificar | 4h | 2011-08-26 17:00 | 2011-08-29 12:00 | 5 | 21.38d | 0d |  | Eduardo | 4h |
| 7 | 1.1.5 | Revisar | 2h | 2011-08-29 13:00 | 2011-08-29 15:00 | 6 | 21.38d | 0d |  | Orlando | 2h |
| 8 | 1.1.6 | Testar | 1h | 2011-08-29 15:00 | 2011-08-29 16:00 | 7 | 21.38d |  |  | Davi | 1h |
| 9 | 1.2 | **RF_01: Manter dados do Usuário** | 3.88d | 2011-08-29 16:00 | 2011-09-02 15:00 |  | 21.38d |  |  | JEDI | 46h |
| 10 | 1.2.1 | Realizar análise do requisito e materializar em documento formal | 4h | 2011-08-29 16:00 | 2011-08-30 11:00 | 8 | 21.38d | 0d | start no earlier than 2011-08-26 09:00 | Orlando | 4h |
| 11 | 1.2.2 | Criar Diagrama de Classes, Caso de Uso e Diagrama Objeto Relacional | 2h | 2011-08-30 11:00 | 2011-08-30 14:00 | 10 | 21.38d | 0d |  | Orlando | 2h |
| 12 | 1.2.3 | Criação da camada de acesso à base de dados | 2h | 2011-08-30 14:00 | 2011-08-30 16:00 | 11 | 21.38d | 0d |  | Ivan | 2h |
| 13 | 1.2.4 | Codificação do CRUD | 4h | 2011-08-30 16:00 | 2011-08-31 11:00 | 12 | 21.38d | 0d |  | Eduardo | 4h |
| 14 | 1.2.5 | Revisar | 2h | 2011-08-31 11:00 | 2011-08-31 14:00 | 13 | 21.38d | 0d |  | Davi | 2h |
| 15 | 1.2.6 | Testar | 1h | 2011-08-31 14:00 | 2011-08-31 15:00 | 14 | 21.38d |  |  | Davi | 1h |
| 16 | 1.2.7 | Preparar apresentação dos resultados da semana (RF11 e RF01) | 1d | 2011-08-31 15:00 | 2011-09-01 15:00 | 15 | 21.38d | 0d |  |  |  |
| 17 | 1.2.8 | Apresentar resultados | 1d | 2011-09-01 15:00 | 2011-09-02 15:00 | 16 | 21.38d |  |  |  |  |
| 18 | 1.3 | **RF_06: Mostrar o desenvolvimento do usuário por periodo** | 1.75d | 2011-09-05 09:00 | 2011-09-06 16:00 |  | 19.25d |  |  | JEDI | 28h |
| 19 | 1.3.1 | Analisar o requisito | 8h | 2011-09-05 09:00 | 2011-09-05 18:00 |  | 19.25d | 0d | finish no earlier than 2011-09-05 18:00 | Eduardo, Ivan | 8h |
| 20 | 1.3.2 | Criar Diagrama de Classes, Caso de Uso e Diagrama Objeto Relacional | 6h | 2011-09-06 09:00 | 2011-09-06 16:00 | 19 | 19.25d |  | start no earlier than 2011-09-05 09:00 | Orlando, Davi | 6h |
| 21 | 1.4 | **RF_10: Controle das atividades durante o exercício** | 0.25d | 2011-09-19 09:00 | 2011-09-19 11:00 |  | 10.75d |  |  |  | 4h |
| 22 | 1.4.1 | Realizar análise do requisito | 1h | 2011-09-19 09:00 | 2011-09-19 10:00 |  | 10.75d | 0d | start no earlier than 2011-09-19 09:00 | Eduardo; Davi | 2h |
| 23 | 1.4.2 | Criar Diagrama de Classes, Caso de Uso e Diagrama Objeto Relacional | 30min | 2011-09-19 10:00 | 2011-09-19 10:30 | 22 | 10.75d | 0d | start no earlier than 2011-09-19 09:00 | Eduardo; Davi | 1h |
| 24 | 1.4.3 | Definir a interface de interação com o usuário | 30min | 2011-09-19 10:30 | 2011-09-19 11:00 | 23 | 10.75d |  | start no earlier than 2011-09-19 09:00 | Eduardo; Davi | 1h |

Notes:
- 2: Esta atividade depende do Requisito RFN_03 da equipe DroidMaster.
- 9: Esta atividade depende do Requisito RFN_03 da equipe DroidMaster e RF_11 da nossa equipe.

| ID | WBS | Task | Duration | Start | Finish | Predecessors | Total slack | Constraint | Resources | Work |
| --- | --- | --- | --- | --- | --- | --- | --- | --- | --- | --- |
| 25 | 1.5 | **RF_12: Exportar Informações** | 1d | 2011-10-03 09:00 | 2011-10-03 18:00 |  | 0d |  |  | 8h |
| 26 | 1.5.1 | Realizar análise do requisito | 1.5h | 2011-10-03 09:00 | 2011-10-03 10:30 |  | 0d | start no earlier than 2011-10-03 09:00 | Davi, Eduardo | 1.5h |
| 27 | 1.5.2 | Criar Diagrama de Classes, Caso de Uso e Diagrama de Sequencia | 1h | 2011-10-03 10:30 | 2011-10-03 11:30 | 26 | 0d | start no earlier than 2011-10-03 09:00 | Davi, Eduardo | 1h |
| 28 | 1.5.3 | Codificar | 3h | 2011-10-03 11:30 | 2011-10-03 15:30 | 27 | 0d | start no earlier than 2011-10-03 09:00 | Ivan, Orlando | 3h |
| 29 | 1.5.4 | Revisar | 30min | 2011-10-03 15:30 | 2011-10-03 16:00 | 28 | 0d | start no earlier than 2011-10-03 09:00 | Ivan, Orlando | 0.5h |
| 30 | 1.5.5 | Testar | 2h | 2011-10-03 16:00 | 2011-10-03 18:00 | 29 | 0d | start no earlier than 2011-10-03 09:00 | Ivan, Orlando | 2h |
